# ASN1 Verification

Schedule from Planner, 2019-07-15 to 2020-06-17.
Phase: Phase I

## Calendars

- Default: Mon-Fri 08:00-12:00, 13:00-17:00; Sat-Sun off.

## Resources

| Resource |
| --- |
| Eng1 |
| Eng2 |
| Eng3 |
| Intern1 |
| Intern2 |

## Schedule

| ID | WBS | Task | Start | Finish | Predecessors | Resources | Work |
| --- | --- | --- | --- | --- | --- | --- | --- |
| 1 | 1 | **Important auxiliary functions** | 2019-07-15 | 2019-08-23 |  | Eng1; Eng2; Eng3 | 968h |
| 2 | 1.1 | **Ber decoder** | 2019-07-15 | 2019-08-23 |  |  | 792h |
| 3 | 1.1.1 | **Specs** | 2019-07-15 | 2019-07-23 |  |  | 304h |
| 4 | 1.1.1.1 | ber_check_tags | 2019-07-15 | 2019-07-17 |  | Eng1; Eng2; Eng3 | 56h |
| 5 | 1.1.1.2 | ber_fetch_tag | 2019-07-15 | 2019-07-23 |  |  | 56h |
| 6 | 1.1.1.3 | ber_fetch_length | 2019-07-15 | 2019-07-23 |  |  | 56h |
| 7 | 1.1.1.4 | ber_tlv_tag_string | 2019-07-15 | 2019-07-17 |  |  | 24h |
| 8 | 1.1.1.5 | ber_fetch_length | 2019-07-15 | 2019-07-23 |  |  | 56h |
| 9 | 1.1.1.6 | ber_tlv_tag_serialize | 2019-07-15 | 2019-07-23 |  |  | 56h |
| 10 | 1.1.2 | **Proofs** | 2019-07-15 | 2019-08-23 |  |  | 488h |
| 11 | 1.1.2.1 | ber_check_tags | 2019-07-15 | 2019-08-23 |  |  | 240h |
| 12 | 1.1.2.2 | ber_fetch_tag | 2019-07-15 | 2019-08-01 |  |  | 112h |
| 13 | 1.1.2.3 | ber_fetch_length | 2019-07-15 | 2019-07-23 |  |  | 56h |
| 14 | 1.1.2.4 | ber_tlv_tag_string | 2019-07-15 | 2019-07-17 |  |  | 24h |
| 15 | 1.1.2.5 | ber_fetch_length | 2019-07-15 | 2019-07-23 |  |  | 56h |
| 16 | 1.2 | **Der encoder** | 2019-07-15 | 2019-08-01 |  |  | 176h |
| 17 | 1.2.1 | **Specs** | 2019-07-15 | 2019-07-17 |  |  | 24h |
| 18 | 1.2.1.1 | der_write_tags | 2019-07-15 | 2019-07-17 |  |  | 24h |
| 19 | 1.2.2 | **Proofs** | 2019-07-15 | 2019-08-01 |  |  | 152h |
| 20 | 1.2.2.1 | der_write_tags | 2019-07-15 | 2019-08-01 |  |  | 112h |
| 21 | 1.2.2.2 | der_write_TL | 2019-07-15 | 2019-07-16 |  |  | 16h |
| 22 | 1.2.2.3 | der_tlv_length_serialize | 2019-07-15 | 2019-07-17 |  |  | 24h |
| 23 | 2 | **Boolean type** | 2019-07-24 | 2019-08-12 | 3 | Intern1; Intern2 | 128h |
| 24 | 2.1 | **Boolean decoder** | 2019-07-24 | 2019-08-01 |  | Intern1 [50%] | 64h |
| 25 | 2.1.1 | BOOLEAN_compare | 2019-07-24 | 2019-07-24 |  |  | 8h |
| 26 | 2.1.2 | BOOLEAN_decode_ber | 2019-07-24 | 2019-08-01 |  |  | 56h |

| ID | WBS | Task | Type | Duration | Start | Finish | Predecessors | Resources | Work |
| --- | --- | --- | --- | --- | --- | --- | --- | --- | --- |
| 27 | 2.2 | **Boolean encoder** |  |  | 2019-07-24 | 2019-07-24 |  | Intern2 [50%] | 8h |
| 28 | 2.2.1 | BOOLEAN_encode_der |  |  | 2019-07-24 | 2019-07-24 |  |  | 8h |
| 29 | 2.3 | Roundtrip correctness Boolean |  |  | 2019-08-02 | 2019-08-12 | 27, 24 |  | 56h |
| 30 | 3 | Milestone: Boolean encoder/decoder correctness | milestone | 0d | 2019-08-12 | 2019-08-12 | 3, 23 |  |  |
| 31 | 4 | **Refactoring and revisions** |  |  | 2019-08-13 | 2019-08-21 | 30 | Eng1; Eng2; Eng3 | 184h |
| 32 | 4.1 | High-level properties |  |  | 2019-08-13 | 2019-08-21 |  |  | 56h |
| 33 | 4.2 | New complexity estimates |  |  | 2019-08-13 | 2019-08-14 |  |  | 16h |
| 34 | 4.3 | Proof automation |  |  | 2019-08-13 | 2019-08-15 | 4 | Eng1; Eng2; Eng3 | 56h |
| 35 | 4.4 | Refactoring C code |  |  | 2019-08-13 | 2019-08-21 | 4 | Eng3 | 56h |
| 36 | 5 | Milestone: Proof automation library | milestone | 0d | 2019-08-21 | 2019-08-21 | 31 |  |  |
| 37 | 6 | Milestone: New planning | milestone | 0d | 2019-08-14 | 2019-08-14 | 33 |  |  |
| 38 | 7 | **Primitive type** |  |  | 2019-07-25 | 2019-08-13 | 3 | Intern1; Intern2 | 168h |
| 39 | 7.1 | **Primitive encoder** |  |  | 2019-07-25 | 2019-08-13 | 27 | Intern1; Intern2 | 112h |
| 40 | 7.1.1 | der_encode_primitive |  |  | 2019-07-25 | 2019-08-02 |  |  | 56h |
| 41 | 7.1.2 | der_write_tag |  |  | 2019-08-05 | 2019-08-13 | 40 |  | 56h |
| 42 | 7.2 | **Primitive decoder** |  |  | 2019-08-02 | 2019-08-12 | 24 | Intern1; Intern2 | 56h |
| 43 | 7.2.1 | ber_decode_primitive |  |  | 2019-08-02 | 2019-08-12 |  |  | 56h |
| 44 | 8 | **Native Integer type** |  |  | 2019-08-14 | 2019-09-13 | 38 | Eng1; Eng2; Eng3 | 296h |
| 45 | 8.1 | **Native Integer decoder** |  |  | 2019-08-14 | 2019-08-20 | 4, 42 | Intern1 | 72h |
| 46 | 8.1.1 | Specs |  |  | 2019-08-14 | 2019-08-15 |  |  | 16h |
| 47 | 8.1.2 | **Proof** |  |  | 2019-08-16 | 2019-08-20 | 46 |  | 56h |
| 48 | 8.1.2.1 | NativeInteger_compare |  |  | 2019-08-16 | 2019-08-20 |  |  | 24h |
| 49 | 8.1.2.2 | asn_INTEGER2ulong |  |  | 2019-08-16 | 2019-08-20 |  |  | 24h |
| 50 | 8.1.2.3 | NativeInteger_decode_ber |  |  | 2019-08-16 | 2019-08-16 |  |  | 8h |

| ID | WBS | Task | Type | Duration | Start | Finish | Predecessors | Resources | Work |
| --- | --- | --- | --- | --- | --- | --- | --- | --- | --- |
| 51 | 8.2 | **Native Integer encoder** |  |  | 2019-08-14 | 2019-08-26 | 39 | Intern2 | 112h |
| 52 | 8.2.1 | Spec |  |  | 2019-08-14 | 2019-08-15 |  |  | 16h |
| 53 | 8.2.2 | **Proof** |  |  | 2019-08-16 | 2019-08-26 | 46 |  | 96h |
| 54 | 8.2.2.1 | Integer_compare |  |  | 2019-08-16 | 2019-08-20 |  |  | 24h |
| 55 | 8.2.2.2 | INTEGER_encode_der |  |  | 2019-08-16 | 2019-08-26 |  |  | 56h |
| 56 | 8.2.2.3 | NativeInteger_encode_der |  |  | 2019-08-16 | 2019-08-19 |  |  | 16h |
| 57 | 8.3 | Roundtrip correctness Integer |  |  | 2019-08-27 | 2019-09-13 | 51, 45 |  | 112h |
| 58 | 9 | Milestone: Native Integer encoder/decoder correctness | milestone | 0d | 2019-09-13 | 2019-09-13 | 44 |  |  |
| 59 | 10 | **Native Real type** |  |  | 2019-09-16 | 2019-11-01 | 38 | Eng1; Eng2; Intern1 | 584h |
| 60 | 10.1 | **Native real decoder** |  |  | 2019-09-16 | 2019-10-03 | 57 | Eng1; Eng2; Eng3; Intern1 | 280h |
| 61 | 10.1.1 | revision of float spec |  |  | 2019-09-16 | 2019-09-19 |  | Eng1; Intern1 | 56h |
| 62 | 10.1.2 | asn_REAL2double |  |  | 2019-09-16 | 2019-10-03 |  |  | 112h |
| 63 | 10.1.3 | NativeReal_decode_ber |  |  | 2019-09-16 | 2019-09-24 |  |  | 56h |
| 64 | 10.1.4 | REAL_compare |  |  | 2019-09-16 | 2019-09-24 |  |  | 56h |
| 65 | 10.2 | **Native real encoder** |  |  | 2019-09-16 | 2019-10-03 | 57 |  | 136h |
| 66 | 10.2.1 | NativeReal_encode_der |  |  | 2019-09-16 | 2019-09-18 |  |  | 24h |
| 67 | 10.2.2 | asn_double2REAL |  |  | 2019-09-16 | 2019-10-03 |  |  | 112h |
| 68 | 10.3 | Roundtrip correctness Real |  |  | 2019-10-04 | 2019-11-01 | 65, 60 |  | 168h |
| 69 | 11 | Milestone: Native Real encoder/decoder correctness |  |  | 2019-11-04 | 2019-11-04 | 59 |  | 8h |
| 70 | 12 | **Octet String type** |  |  | 2019-11-04 | 2020-03-06 | 38 | Eng1; Eng2; Intern1 | 776h |
| 71 | 12.1 | **Octet string decoder** |  |  | 2019-11-04 | 2020-01-24 | 68 |  | 480h |
| 72 | 12.1.1 | OCTET_STRING_decode_ber |  |  | 2019-11-04 | 2020-01-24 |  |  | 480h |
| 73 | 12.2 | **Octet string encoder** |  |  | 2019-11-04 | 2019-11-12 | 68 |  | 56h |
| 74 | 12.2.1 | OCTET_STRING_encode_der |  |  | 2019-11-04 | 2019-11-12 |  |  | 56h |
| 75 | 12.3 | Roundtrip correctness Octet string |  |  | 2020-01-27 | 2020-03-06 | 72, 73 |  | 240h |
| 76 | 13 | Milestone: Octet String encoder/decoder correctness | milestone | 0d | 2020-03-06 | 2020-03-06 | 70 |  |  |

| ID | WBS | Task | Type | Duration | Start | Finish | Predecessors | Resources | Work |
| --- | --- | --- | --- | --- | --- | --- | --- | --- | --- |
| 77 | 14 | **Time types** |  |  | 2019-11-13 | 2020-02-13 | 38 | Eng3; Intern1 | 448h |
| 78 | 14.1 | **Time decoder** |  |  | 2020-01-27 | 2020-02-13 | 71 |  | 280h |
| 79 | 14.1.1 | Spec of time type |  |  | 2020-01-27 | 2020-02-13 |  |  | 112h |
| 80 | 14.1.2 | GeneralizedTime_compare |  |  | 2020-01-27 | 2020-02-13 |  |  | 112h |
| 81 | 14.1.3 | UTCTime_compare |  |  | 2020-01-27 | 2020-02-04 |  |  | 56h |
| 82 | 14.2 | **Time encoder** |  |  | 2019-11-13 | 2019-12-11 | 74 |  | 168h |
| 83 | 14.2.1 | asn_GT2time_frac |  |  | 2019-11-13 | 2019-12-11 |  |  | 168h |
| 84 | 15 | Milestone: Time types encoder/decoder correctness | milestone | 0d | 2020-02-13 | 2020-02-13 | 77 |  |  |
| 85 | 16 | Milestone: Time library for Coq | milestone | 0d | 2020-02-13 | 2020-02-13 | 77 |  |  |
| 86 | 17 | Other simple types |  |  | 2020-01-27 | 2020-01-30 | 74, 72 | Intern1; Intern2 | 56h |
| 87 | 18 | Milestone: All simple types | milestone | 0d | 2020-01-30 | 2020-01-30 | 86 |  |  |
| 88 | 19 | **Choice type** |  |  | 2020-01-30 | 2020-03-19 |  | Eng1; Eng2; Eng3 | 432h |
| 89 | 19.1 | **Choice decoder** |  |  | 2020-01-30 | 2020-02-28 | 86 |  | 216h |
| 90 | 19.1.1 | CHOICE_decode_ber |  |  | 2020-01-30 | 2020-02-28 |  |  | 168h |
| 91 | 19.1.2 | _search4tag |  |  | 2020-01-30 | 2020-02-04 |  |  | 24h |
| 92 | 19.1.3 | other aux functions |  |  | 2020-01-30 | 2020-02-04 |  |  | 24h |
| 93 | 19.2 | **Choice encoder** |  |  | 2020-01-30 | 2020-02-13 | 86 |  | 104h |
| 94 | 19.2.1 | CHOICE_encode_der |  |  | 2020-01-30 | 2020-02-13 |  |  | 80h |
| 95 | 19.2.2 | CHOICE_outmost_tag |  |  | 2020-01-30 | 2020-02-04 |  |  | 24h |
| 96 | 19.3 | Roundtrip correctness Choice |  |  | 2020-02-28 | 2020-03-19 | 94, 89 |  | 112h |
| 97 | 20 | Milestone: Choice encoder/decoder correctness |  |  | 2020-03-19 | 2020-03-20 | 88 |  | 8h |
| 98 | 21 | **Sequence type** |  |  | 2020-03-19 | 2020-05-28 | 88 | Eng1; Eng2; Eng3 | 712h |
| 99 | 21.1 | **Sequence decoder** |  |  | 2020-03-19 | 2020-05-28 | 96 |  | 400h |
| 100 | 21.1.1 | SEQUENCE_decode_ber |  |  | 2020-03-19 | 2020-05-28 |  |  | 400h |
| 101 | 21.2 | _t2e_cmp |  |  | 2020-03-19 | 2020-03-20 |  |  | 8h |

| ID | WBS | Task | Type | Duration | Start | Finish | Predecessors | Resources | Work |
| --- | --- | --- | --- | --- | --- | --- | --- | --- | --- |
| 102 | 21.3 | **Sequence encoder** |  |  | 2020-03-19 | 2020-04-02 | 96 |  | 136h |
| 103 | 21.3.1 | SEQUENCE_encode_der |  |  | 2020-03-19 | 2020-04-02 |  |  | 80h |
| 104 | 21.3.2 | SEQUENCE_OF_ENCODE_der |  |  | 2020-03-19 | 2020-03-30 |  |  | 56h |
| 105 | 21.4 | Roundtrip correctness Sequence |  |  | 2020-04-02 | 2020-05-01 | 103 |  | 168h |
| 106 | 22 | Milestone: Sequence encoder/decoder correctness |  |  | 2020-05-28 | 2020-05-29 | 98 |  | 8h |
| 107 | 23 | **Set type** |  |  | 2020-05-28 | 2020-06-17 | 98 | Eng1; Eng2; Eng3 | 488h |
| 108 | 23.1 | **Set_of decoder** |  |  | 2020-05-28 | 2020-06-17 | 86 |  | 264h |
| 109 | 23.1.1 | SET_OF_decode_ber |  |  | 2020-05-28 | 2020-06-17 |  |  | 112h |
| 110 | 23.1.2 | _SET_is_populated |  |  | 2020-05-28 | 2020-06-01 |  |  | 16h |
| 111 | 23.1.3 | SET_OF_decode_ber |  |  | 2020-05-28 | 2020-06-17 |  |  | 112h |
| 112 | 23.1.4 | _el_addbytes |  |  | 2020-05-28 | 2020-06-01 |  |  | 16h |
| 113 | 23.1.5 | _el_buf_cmp |  |  | 2020-05-28 | 2020-05-29 |  |  | 8h |
| 114 | 23.2 | **Set_of encoder** |  |  | 2020-05-28 | 2020-06-08 | 86 |  | 112h |
| 115 | 23.2.1 | SET_OF_encode_der |  |  | 2020-05-28 | 2020-06-08 |  |  | 56h |
| 116 | 23.2.2 | SET_OF__encode_sorted |  |  | 2020-05-28 | 2020-06-08 |  |  | 56h |
| 117 | 23.3 | Roundtrip correctness of Set type |  |  | 2020-05-28 | 2020-06-17 |  |  | 112h |
| 118 | 24 | Milestone: Set type encoder/decoder correctness | milestone | 0d | 2020-06-17 | 2020-06-17 | 107 |  |  |
| 119 | 25 | Milestone: All constructed types correctness | milestone | 0d | 2020-06-17 | 2020-06-17 | 107 |  |  |
