# ASN1 Verification

Schedule from Planner, 2019-07-15 to 2020-04-17.
Phase: Phase I

## Calendars

- Default: Mon-Fri 08:00-12:00, 13:00-17:00; Sat-Sun off.

## Resources

| Resource |
| --- |
| Eng1 |
| Eng2 |
| Eng3 |
| Intern1 |
| Intern2 |
| CEng |

## Schedule

| ID | Task | Type | Duration | Start | Finish | Predecessors | Resources | Work |
| --- | --- | --- | --- | --- | --- | --- | --- | --- |
| 1 | Formalization of ASN1 specification |  |  | 2019-07-15 | 2019-08-02 |  | Eng1; Eng2; Eng3; Intern1 [50%]; Intern2 [50%] | 480h |
| 2 | Milestone: X.509 part of ASN1 standrad formalized | milestone | 0d | 2019-08-02 | 2019-08-02 | 1 |  |  |
| 3 | Refactoring C code |  |  | 2019-07-15 | 2019-08-23 |  | CEng | 240h |
| 4 | Primitive types verification |  |  | 2019-08-26 | 2019-12-25 | 3, 1 | Eng1; Eng2; Eng3; Intern1 [50%]; Intern2 [50%] | 2800h |
| 5 | Refactoring and revisions |  |  | 2019-12-25 | 2020-01-08 | 4 | Eng1; Eng2; Eng3 | 240h |
| 6 | Milestone: primitive types correctness | milestone | 0d | 2019-12-25 | 2019-12-25 | 4 |  |  |
| 7 | Constructed types verification |  |  | 2020-01-08 | 2020-03-18 | 5, 6 | Eng1; Eng2; Eng3; Intern1 [50%]; Intern2 [50%] | 1600h |
| 8 | Milestone: constructed types correctness | milestone | 0d | 2020-03-18 | 2020-03-18 | 7 |  |  |
| 9 | High-level properties |  |  | 2020-03-18 | 2020-04-08 | 1, 4, 7 | Eng1; Eng2; Eng3; Intern1 [50%]; Intern2 [50%] | 480h |
| 10 | Milesotone: highl-level properties proof | milestone | 0d | 2020-04-08 | 2020-04-08 | 9 |  |  |
| 11 | Report/paper |  |  | 2020-04-08 | 2020-04-17 | 9 | Eng1; Eng2; Eng3; Intern1 [50%]; Intern2 [50%] | 240h |
| 12 | Milestone: report | milestone | 0d | 2020-04-17 | 2020-04-17 | 11 |  |  |
